# MangerProjectPMKaraseBooking

Schedule from MS Project, 2022-10-31 to 2022-12-13.

## Calendars

- Standard: Mon-Fri 08:00-12:00, 13:00-17:00; Sat-Sun off.

## Resources

| Resource | Group |
| --- | --- |
| H.Phú | PM |
| T.Đạt | Coder |
| M.Thành | Tester |
| Q.Vinh | Tester |
| All |  |

## Schedule

| ID | WBS | Task | Duration | Start | Finish | Predecessors | Total slack | Free slack | Resources | Work |
| --- | --- | --- | --- | --- | --- | --- | --- | --- | --- | --- |
| 1 | 1 | **Tiến độ dự án Quản lý cửa hàng đồ uống** | 32d | 2022-10-31 | 2022-12-13 |  | 0d |  |  | 920h |
| 2 | 1.1 | **Lấy thông tin khách hàng** | 2d | 2022-10-31 | 2022-11-01 |  | 0d |  |  | 24h |
| 3 | 1.1.1 | Tư vấn cho khách hàng về dịch vụ; các công nghệ mà nhóm sử dụng và các sản phẩm của nhóm đã làm; xu hướng ứng dung quản lý của các cửa hàng đồ uống hiện nay | 1d | 2022-10-31 | 2022-10-31 |  | 0d |  | H.Phú | 8h |
| 4 | 1.1.2 | Lấy thông tin từ phía khách hàng về các chức năng, yêu cầu thiết kế, công nghệ sử dụng | 1d | 2022-11-01 | 2022-11-01 | 3 | 0d |  | H.Phú; M.Thành | 16h |
| 5 | 1.2 | **Phân tích yêu cầu của khách hàng** | 3d | 2022-11-02 | 2022-11-04 |  | 0d |  |  | 128h |
| 6 | 1.2.1 | Phân tích các chức năng khách hàng yêu cầu sử dụng cho sản phẩm | 1d | 2022-11-02 | 2022-11-02 | 4 | 0d |  | H.Phú; Q.Vinh | 16h |
| 7 | 1.2.2 | Phác thảo sơ đồ Usecase tổng quát | 2d | 2022-11-02 | 2022-11-03 | 6SS | 0d |  | H.Phú | 16h |
| 8 | 1.2.3 | Phác thảo sơ đồ Usecase chi tiết cho từng vai trò | 3d | 2022-11-02 | 2022-11-04 | 6SS | 28d |  | Q.Vinh; T.Đạt | 48h |
| 9 | 1.2.4 | Viết đặc tả cho các sơ đồ Usecase | 3d | 2022-11-02 | 2022-11-04 | 7SS | 0d |  | M.Thành; Q.Vinh | 48h |
| 10 | 1.3 | **Thiết kế giao diện sản phẩm** | 7d | 2022-11-07 | 2022-11-15 |  | 0d |  |  | 264h |
| 11 | 1.3.1 | Lập kế hoạch thiết kế giao diện | 1d | 2022-11-07 | 2022-11-07 | 9 | 0d |  | M.Thành; Q.Vinh | 16h |
| 12 | 1.3.2 | Lập sơ đồ SiteMap cho giao diện | 1d | 2022-11-07 | 2022-11-07 | 11SS | 0d |  | T.Đạt; M.Thành | 16h |
| 13 | 1.3.3 | **Thiết kế giao diện demo** | 3d | 2022-11-08 | 2022-11-10 |  | 0d |  |  | 192h |
| 14 | 1.3.3.1 | Thiết kế giao diện trang chủ, trang đăng nhập, trang Quản lý nhân viên | 3d | 2022-11-08 | 2022-11-10 | 12 | 0d |  | M.Thành; Q.Vinh | 48h |
| 15 | 1.3.3.2 | Thiết kế giao diện trang quản lý sản phẩm, quản lý hóa đơn, | 3d | 2022-11-08 | 2022-11-10 | 14SS | 0d |  | H.Phú; T.Đạt | 48h |
| 16 | 1.3.3.3 | Thiết kế giao diện trang khuyến mãi | 3d | 2022-11-08 | 2022-11-10 | 14SS | 0d |  | Q.Vinh; M.Thành | 48h |
| 17 | 1.3.3.4 | Thiết kế trang quản lý bán hàng | 3d | 2022-11-08 | 2022-11-10 | 14SS | 0d |  | H.Phú | 24h |
| 18 | 1.3.3.5 | Kiểm thử các giao diện | 3d | 2022-11-08 | 2022-11-10 | 14SS | 0d |  | M.Thành | 24h |
| 19 | 1.3.4 | **Xác nhận giao diện** | 3d | 2022-11-11 | 2022-11-15 | 13 | 0d |  |  | 40h |
| 20 | 1.3.4.1 | Demo giao diện lần 1 | 2d | 2022-11-11 | 2022-11-14 | 18 | 0d |  | H.Phú | 16h |
| 21 | 1.3.4.2 | Sửa, cập nhật giao diện lần 1 | 2d | 2022-11-11 | 2022-11-14 | 20SS | 0d |  | M.Thành | 16h |
| 22 | 1.3.4.3 | Kiểm tra và xác nhận hoàn thành thiết kế giao diện | 1d | 2022-11-15 | 2022-11-15 | 21 | 0d |  | H.Phú | 8h |
| 23 | 1.4 | **Thiết kế cơ sở dữ liệu sản phẩm** | 5d | 2022-11-16 | 2022-11-22 | 10 | 0d |  |  | 112h |
| 24 | 1.4.1 | Lên ý tưởng và họp | 1d | 2022-11-16 | 2022-11-16 | 22 | 0d |  | H.Phú; T.Đạt | 16h |
| 25 | 1.4.2 | Phác thảo sơ đồ ER | 1d | 2022-11-17 | 2022-11-17 | 24 | 19d |  | T.Đạt | 8h |
| 26 | 1.4.3 | kiểm tra tính đúng đắn của sơ đồ | 2d | 2022-11-16 | 2022-11-17 | 24SS | 17d | 0d | H.Phú | 16h |
| 27 | 1.4.4 | Xác nhận lại sơ đồ | 2d | 2022-11-18 | 2022-11-21 | 26 | 17d |  | H.Phú | 16h |
| 28 | 1.4.5 | Xây dựng cơ sở dữ liệu cho sản phẩm | 1d | 2022-11-16 | 2022-11-16 | 24SS | 0d |  | T.Đạt | 8h |

| ID | WBS | Task | Duration | Start | Finish | Predecessors | Total slack | Resources | Work |
| --- | --- | --- | --- | --- | --- | --- | --- | --- | --- |
| 29 | 1.4.6 | **Demo cơ sở dữ liệu sản phẩm** | 4d | 2022-11-17 | 2022-11-22 | 28 | 0d |  | 48h |
| 30 | 1.4.6.1 | Nhập dữ liệu mẫu vào cơ sở dữ liệu | 2d | 2022-11-17 | 2022-11-18 | 28 | 0d | M.Thành | 16h |
| 31 | 1.4.6.2 | Sửa và cập nhật cơ sở dữ liệu | 2d | 2022-11-17 | 2022-11-18 | 30SS | 0d | T.Đạt | 16h |
| 32 | 1.4.6.3 | Xác nhận hoàn thành cơ sở dữ liệu | 2d | 2022-11-21 | 2022-11-22 | 31 | 0d | H.Phú | 16h |
| 33 | 1.5 | **Lập trình sản phẩm** | 11d | 2022-11-23 | 2022-12-07 |  | 0d |  | 312h |
| 34 | 1.5.1 | Họp và xây dựng kế hoạch lập trình | 1d | 2022-11-23 | 2022-11-23 | 32 | 0d | All | 8h |
| 35 | 1.5.2 | Lập kể hoạch kiểm thử | 1d | 2022-11-23 | 2022-11-23 | 34SS | 0d | H.Phú; Q.Vinh | 16h |
| 36 | 1.5.3 | **Code giao diện sản phẩm** | 4d | 2022-11-24 | 2022-11-29 |  | 0d |  | 120h |
| 37 | 1.5.3.1 | Xem thiết kế SiteMap và Mockup giao diện | 1d | 2022-11-24 | 2022-11-24 | 35 | 0d | All | 8h |
| 38 | 1.5.3.2 | Xây dựng kế hoạch và quy chuẩn code | 1d | 2022-11-24 | 2022-11-24 | 37SS | 0d | H.Phú | 8h |
| 39 | 1.5.3.3 | **Code giao diện** | 3d | 2022-11-25 | 2022-11-29 |  | 0d |  | 104h |
| 40 | 1.5.3.3.1 | Code giao diện trang chủ, trang đăng nhập, trang Quản lý nhân viên | 2d | 2022-11-25 | 2022-11-28 | 38 | 0d | M.Thành; Q.Vinh | 32h |
| 41 | 1.5.3.3.2 | Code giao diện trang quản lý sản phẩm, quản lý hóa đơn, | 2d | 2022-11-25 | 2022-11-28 | 40SS | 11d | Q.Vinh | 16h |
| 42 | 1.5.3.3.3 | Code giao diện trang khuyến mãi | 2d | 2022-11-25 | 2022-11-28 | 40SS | 11d | M.Thành | 16h |
| 43 | 1.5.3.3.4 | Code giao diện trang bán hàng | 2d | 2022-11-25 | 2022-11-28 | 40SS | 0d | T.Đạt | 16h |
| 44 | 1.5.3.3.5 | Kiểm thử giao diện | 1d | 2022-11-29 | 2022-11-29 | 43 | 0d | M.Thành | 8h |
| 45 | 1.5.3.3.6 | cập nhật và sửa lỗi giao diện | 1d | 2022-11-29 | 2022-11-29 | 44SS | 10d | Q.Vinh | 8h |
| 46 | 1.5.3.3.7 | Xác nhận giao diện | 1d | 2022-11-29 | 2022-11-29 | 44SS | 0d | H.Phú | 8h |
| 47 | 1.5.4 | **Code xử lý cho các chức năng chính sản phẩm** | 6d | 2022-11-30 | 2022-12-07 |  | 0d |  | 168h |
| 48 | 1.5.4.1 | Xem thiết kế sản phẩm và lập kế hoạch lập trình | 1d | 2022-11-30 | 2022-11-30 | 46 | 0d | All | 8h |
| 49 | 1.5.4.2 | Lập quy chuẩn lập trình | 1d | 2022-11-30 | 2022-11-30 | 48SS | 0d | H.Phú; T.Đạt | 16h |
| 50 | 1.5.4.3 | **Code Chức năng sản phẩm** | 5d | 2022-12-01 | 2022-12-07 |  | 0d |  | 144h |
| 51 | 1.5.4.3.1 | Code chức năng thêm sửa, xóa, cập nhật | 3d | 2022-12-01 | 2022-12-05 | 49 | 0d | H.Phú; T.Đạt | 48h |
| 52 | 1.5.4.3.2 | Code chức năng tìm kiếm | 3d | 2022-12-01 | 2022-12-05 | 51SS | 6d | H.Phú | 24h |
| 53 | 1.5.4.3.3 | Code chức năng bán hàng | 3d | 2022-12-01 | 2022-12-05 | 51SS | 0d | H.Phú; T.Đạt | 48h |
| 54 | 1.5.4.3.4 | Kiểm thử chức năng | 1d | 2022-12-06 | 2022-12-06 | 53 | 0d | M.Thành | 8h |
| 55 | 1.5.4.3.5 | Cập nhật và sửa lỗi chức năng | 1d | 2022-12-06 | 2022-12-06 | 54SS | 0d | T.Đạt | 8h |
| 56 | 1.5.4.3.6 | Xác nhận lại code các chức năng | 1d | 2022-12-07 | 2022-12-07 | 55 | 0d | H.Phú | 8h |

| ID | WBS | Task | Duration | Start | Finish | Predecessors | Total slack | Resources | Work |
| --- | --- | --- | --- | --- | --- | --- | --- | --- | --- |
| 57 | 1.6 | **Demo sản phẩm** | 4d | 2022-12-08 | 2022-12-13 |  | 0d |  | 80h |
| 58 | 1.6.1 | Chạy thử và nhập liệu cho các chức năng | 1d | 2022-12-08 | 2022-12-08 | 56 | 0d | M.Thành | 8h |
| 59 | 1.6.2 | **Demo sản phẩm lần 1** | 1d | 2022-12-09 | 2022-12-09 |  | 0d |  | 16h |
| 60 | 1.6.2.1 | Kiểm tra tính liên kết và tuần tự của các chức năng | 1d | 2022-12-09 | 2022-12-09 | 58 | 0d | Q.Vinh | 8h |
| 61 | 1.6.2.2 | Cập nhật và sửa nếu có lỗi xảy ra | 1d | 2022-12-09 | 2022-12-09 | 60SS | 0d | T.Đạt | 8h |
| 62 | 1.6.3 | **Demo sản phẩm lần 2** | 1d | 2022-12-12 | 2022-12-12 |  | 0d |  | 32h |
| 63 | 1.6.3.1 | Nhập dữ liệu | 1d | 2022-12-12 | 2022-12-12 | 61 | 0d | T.Đạt | 8h |
| 64 | 1.6.3.2 | Thực hiện các chức năng của sản phẩm | 1d | 2022-12-12 | 2022-12-12 | 63SS | 1d | M.Thành | 8h |
| 65 | 1.6.3.3 | Cập nhật lại sản phẩm hoàn thiện | 1d | 2022-12-12 | 2022-12-12 | 63SS | 1d | Q.Vinh | 8h |
| 66 | 1.6.3.4 | Kiểm tra và xác nhận lại sản phẩm | 1d | 2022-12-12 | 2022-12-12 | 63SS | 0d | H.Phú | 8h |
| 67 | 1.6.4 | **Hoàn thiện sản phẩm** | 1d | 2022-12-13 | 2022-12-13 |  | 0d |  | 24h |
| 68 | 1.6.4.1 | Viết tài liêu dự án | 1d | 2022-12-13 | 2022-12-13 | 66 | 0d | Q.Vinh | 8h |
| 69 | 1.6.4.2 | Viết hướng dẫn sử dụng | 1d | 2022-12-13 | 2022-12-13 | 68SS | 0d | M.Thành | 8h |
| 70 | 1.6.4.3 | Bàn giao quản trị viên, đào tạo, hướng dẫn quản trị viên sử dụng | 1d | 2022-12-13 | 2022-12-13 | 68SS | 0d | H.Phú | 8h |
